Schedule from MS Project, 2024-11-07 to 2024-12-18, costs in ¥.

## Calendars

- 外卖管理系统: Mon-Sat 08:00-12:00, 13:00-17:00; Sun off.

## Resources

| Resource | Rate |
| --- | --- |
| 项目经理 | 100 |
| 需求人员 | 100 |
| 设计人员 | 100 |
| 开发人员 | 100 |
| 测试人员 | 100 |
| 质保人员 | 100 |
| Mysql Standard Edition | 35000 |
| IDEA | 4.16 |
| 阿里云u1实例（经济型） | 33.25 |
| 管理费用 | 12.5 |

## Schedule

| ID | WBS | Task | Type | Duration | Start | Finish | Predecessors | Total slack | Free slack | Constraint | Resources | Work | Cost |
| --- | --- | --- | --- | --- | --- | --- | --- | --- | --- | --- | --- | --- | --- |
| 1 | 1 | **外卖管理系统** |  | 36d | 2024-11-07 | 2024-12-18 |  | 0d |  |  | IDEA; 阿里云u1实例（经济型）; 管理费用 | 792h | 144,065 |
| 2 | 1.1 | **项目规划和需求分析** |  | 6d | 2024-11-07 | 2024-11-13 |  | 0d |  |  |  | 88h | 8,800 |
| 3 | 1.1.1 | 需求分析 |  | 3d | 2024-11-07 | 2024-11-11 |  | 0d |  |  | 需求人员; 项目经理 | 48h | 4,800 |
| 4 | 1.1.2 | 需求评审 |  | 1d | 2024-11-12 | 2024-11-12 | 3 | 0d |  |  | 项目经理; 质保人员 | 16h | 1,600 |
| 5 | 1.1.3 | 风险评估与应对策略 | milestone | 1d | 2024-11-13 | 2024-11-13 | 4 | 0d |  |  | 项目经理; 质保人员; 需求人员 | 24h | 2,400 |
| 6 | 1.2 | **系统设计与架构** |  | 11d | 2024-11-14 | 2024-11-26 | 5 | 0d |  |  |  | 104h | 10,400 |
| 7 | 1.2.1 | 总体设计 |  | 1d | 2024-11-14 | 2024-11-14 | 5 | 1d |  |  | 设计人员 | 8h | 800 |
| 8 | 1.2.2 | 总体设计评审 |  | 2d | 2024-11-14 | 2024-11-15 | 7FF | 0d |  | finish no earlier than 2024-11-14 | 项目经理; 质保人员 | 16h | 1,600 |
| 9 | 1.2.3 | 概要设计 |  | 1d | 2024-11-18 | 2024-11-18 | 8 | 0d |  |  | 设计人员 | 8h | 800 |
| 10 | 1.2.4 | 概要设计评审 |  | 1d | 2024-11-18 | 2024-11-18 | 9FF | 0d |  |  | 项目经理; 质保人员 | 16h | 1,600 |
| 11 | 1.2.5 | 详细设计 |  | 3d | 2024-11-19 | 2024-11-21 | 10 | 0d |  |  | 设计人员 | 24h | 2,400 |
| 12 | 1.2.6 | 架构设计 |  | 3d | 2024-11-22 | 2024-11-26 | 11FF | 1d | 0d |  | 设计人员 | 24h | 2,400 |
| 13 | 1.2.7 | 架构设计评审 | milestone | 1d | 2024-11-26 | 2024-11-26 | 12FF | 1d | 0d |  | 测试人员 | 8h | 800 |
| 14 | 1.3 | **开发阶段** |  | 11d | 2024-11-27 | 2024-12-09 | 13 | 1d |  |  | Mysql Standard Edition | 88h | 43,800 |
| 15 | 1.3.1 | **用户端开发** |  | 4d | 2024-11-27 | 2024-11-30 | 13 | 1d | 0d |  | 开发人员 | 24h | 2,400 |
| 16 | 1.3.1.1 | 用户端UI开发 |  | 1d | 2024-11-27 | 2024-11-27 | 6 | 1d | 0d |  |  |  |  |
| 17 | 1.3.1.2 | 点单功能开发 |  | 2d | 2024-11-28 | 2024-11-29 | 16 | 1d | 0d |  |  |  |  |
| 18 | 1.3.1.3 | 用户交流投诉开发 |  | 1d | 2024-11-30 | 2024-11-30 | 17 | 1d |  |  |  |  |  |
| 19 | 1.3.2 | **配送员端开发** |  | 3d | 2024-12-02 | 2024-12-04 | 15 | 1d | 0d |  | 开发人员 | 24h | 2,400 |
| 20 | 1.3.2.1 | 配送员端UI开发 |  | 1d | 2024-12-02 | 2024-12-02 | 15 | 1d | 0d |  |  |  |  |
| 21 | 1.3.2.2 | 配送员接单开发 |  | 2d | 2024-12-03 | 2024-12-04 | 20 | 1d |  |  |  |  |  |
| 22 | 1.3.3 | **餐厅管理端开发** |  | 3d | 2024-12-05 | 2024-12-07 | 19 | 1d | 0d |  | 开发人员 | 16h | 1,600 |
| 23 | 1.3.3.1 | 餐厅管理端UI开发 |  | 1d | 2024-12-05 | 2024-12-05 | 19 | 1d | 0d |  |  |  |  |
| 24 | 1.3.3.2 | 餐品调度开发 |  | 2d | 2024-12-06 | 2024-12-07 | 23 | 1d |  |  |  |  |  |
| 25 | 1.3.4 | 项目集成 |  | 1d | 2024-12-09 | 2024-12-09 | 22 | 1d | 0d |  | 开发人员 | 8h | 800 |
| 26 | 1.3.5 | 接口设计 | milestone | 2d | 2024-12-06 | 2024-12-09 | 25FF | 1d | 0d |  | 设计人员 | 16h | 1,600 |

Notes:
- 4: 3FS
- 5: 3FS,4FS
- 6: 2FS
- 7: 2FS
- 8: 7FF
- 9: 8FS
- 10: 9FF
- 11: 10FS
- 12: 11FF 包含模块设计
- 13: 12FF
- 14: 6FS
- 15: 6FS
- 16: 6FS
- 17: 16FS
- 18: 17FS
- 19: 15FS
- 20: 15FS
- 21: 20FS
- 22: 19FS
- 23: 19FS
- 24: 23FS
- 25: 22FF
- 26: 25FF

| ID | WBS | Task | Type | Duration | Start | Finish | Predecessors | Total slack | Free slack | Resources | Work | Cost |
| --- | --- | --- | --- | --- | --- | --- | --- | --- | --- | --- | --- | --- |
| 27 | 1.4 | **测试阶段** |  | 4d | 2024-12-10 | 2024-12-13 | 26 | 1d |  | Mysql Standard Edition | 24h | 37,400 |
| 28 | 1.4.1 | 测试用例编制 |  | 2d | 2024-12-10 | 2024-12-11 | 11SS | 2d | 0d | 测试人员 | 16h | 1,600 |
| 29 | 1.4.2 | 测试用例评审 |  | 1d | 2024-12-11 | 2024-12-11 | 28FF | 2d |  | 质保人员 | 8h | 800 |
| 30 | 1.4.3 | 单元测试 |  | 1d | 2024-12-10 | 2024-12-10 | 26 | 1d | 0d |  |  |  |
| 31 | 1.4.4 | 集成测试 |  | 1d | 2024-12-11 | 2024-12-11 | 30 | 1d | 0d |  |  |  |
| 32 | 1.4.5 | 系统测试 |  | 1d | 2024-12-12 | 2024-12-12 | 31 | 1d | 0d |  |  |  |
| 33 | 1.4.6 | 验收测试 | milestone | 1d | 2024-12-13 | 2024-12-13 | 32 | 1d |  |  |  |  |
| 34 | 1.5 | **发布阶段** |  | 3d | 2024-12-16 | 2024-12-18 | 33 | 0d |  | Mysql Standard Edition | 48h | 39,800 |
| 35 | 1.5.1 | 文档编写 |  | 2d | 2024-12-16 | 2024-12-17 | 27 | 0d |  | 开发人员; 需求人员 | 32h | 3,200 |
| 36 | 1.5.2 | 软件发布 | milestone | 1d | 2024-12-18 | 2024-12-18 | 35 | 0d |  | 开发人员; 项目经理 | 16h | 1,600 |

Notes:
- 27: 14FS
- 28: 11SS
- 29: 28FF
- 30: 14FS
- 31: 30FS
- 32: 31FS
- 33: 32FS
- 34: 27FS
- 35: 27FS
- 36: 35FS
